# 1150080127_LAB5_3

How a schedule from MS Project changed from version to version. A marks actual dates.

## Version 1 (saved 2025-10-03, file 1150080127_LAB5_3.mpp)

| ID | WBS | Task | Duration | Start | Finish | Predecessors | Total float |
| --- | --- | --- | --- | --- | --- | --- | --- |
| 1 | 1 | **1150080127_DX_MY** | 23d | 2022-11-01 | 2022-12-02 |  | 0d |
| 2 | 1.1 | **Kiểm thử đơn vị** | 15.5d | 2022-11-01 | 2022-11-23 |  | 0d |
| 3 |  | Kiểm thử đơn vị | 8d | 2022-11-01 | 2022-11-10 |  | 0d |
| 4 |  | Kiểm thử tích hợp | 10d | 2022-11-08 | 2022-11-23 | 3FS-20h | 0d |
| 5 | 1.2 | **Kiểm thử hệ thống** | 7.5d | 2022-11-23 | 2022-12-02 |  | 0d |
| 6 |  | Kiểm thử chức năng | 5d | 2022-11-23 | 2022-11-30 | 4 | 0d |
| 7 |  | Kiểm thử hiệu suất | 3d | 2022-11-23 | 2022-11-28 | 4 | 2d |
| 8 |  | Kiểm thử chấp nhận | 1.5d | 2022-11-30 | 2022-12-01 | 6, 7 | 0d |
| 9 |  | Kiểm thử cài đặt | 1d | 2022-12-02 | 2022-12-02 | 8 | 0d |
| 10 |  | Hệ thống sẵn sàng cho sử dụng | 0d | 2022-12-02 | 2022-12-02 | 9 | 0d |

## Version 2 (saved 2025-10-04, file 1150080127_LAB53_Tracking.mpp)

Last finish stays 2022-12-02.

Changed:

| ID | Task | Start | Finish | Duration | Complete | Other |
| --- | --- | --- | --- | --- | --- | --- |
| 1 | **1150080127_DX_MY** | 2022-11-01 A |  |  | 0% → 26% | baseline start none → 2022-11-01; baseline finish none → 2022-12-02 |
| 2 | **Kiểm thử đơn vị** | 2022-11-01 A |  |  | 0% → 41% | baseline start none → 2022-11-01; baseline finish none → 2022-11-23 |
| 3 | Kiểm thử đơn vị | 2022-11-01 A | 2022-11-10 → 2022-11-15 (+5d) | 8d → 10d | 0% → 73% | baseline start none → 2022-11-01; baseline finish none → 2022-11-10 |
| 4 | Kiểm thử tích hợp | 2022-11-08 → 2022-11-10 (+2d) |  | 10d → 8d |  | baseline start none → 2022-11-08; baseline finish none → 2022-11-23 |
| 5 | **Kiểm thử hệ thống** |  |  |  |  | baseline start none → 2022-11-23; baseline finish none → 2022-12-02 |
| 6 | Kiểm thử chức năng |  |  |  |  | baseline start none → 2022-11-23; baseline finish none → 2022-11-30 |
| 7 | Kiểm thử hiệu suất |  |  |  |  | baseline start none → 2022-11-23; baseline finish none → 2022-11-28 |
| 8 | Kiểm thử chấp nhận |  |  |  |  | baseline start none → 2022-11-30; baseline finish none → 2022-12-01 |
| 9 | Kiểm thử cài đặt |  |  |  |  | baseline start none → 2022-12-02; baseline finish none → 2022-12-02 |
| 10 | Hệ thống sẵn sàng cho sử dụng |  |  |  |  | baseline start none → 2022-12-02; baseline finish none → 2022-12-02 |
